# Projektplan_04

Schedule from MS Project, 2014-06-02 to 2014-09-02, status date 2014-06-08, A marks actual dates.

## Calendars

- Standard: Mon-Fri 08:00-12:00, 13:00-17:00; Sat-Sun off. Exceptions (off unless hours are given): 2014-05-20 to 2014-08-30 (Frei, recurring).

## Resources

| Resource |
| --- |
| David |
| Felix |
| Tobias |
| Lukas |

## Schedule

| ID | WBS | Task | Type | Duration | Start | Finish | Predecessors | Complete | Remaining | Total slack | Free slack | Constraint | Resources | Work | Actual work | Deliverables |
| --- | --- | --- | --- | --- | --- | --- | --- | --- | --- | --- | --- | --- | --- | --- | --- | --- |
| 1 | 1 | **Wettbewerbsanalyse** |  | 3.83d | 2014-06-02 A | 2014-06-12 |  | 31% | 2.65d | 0d |  |  |  | 20.8h | 6.4h |  |
| 2 | 1.1 | Alternativen recherchieren |  | 2d | 2014-06-02 A | 2014-06-05 |  | 50% | 1d | 0.12d | 0d |  | Tobias [50%] | 8h | 4h | Wettbewerbsanalyse: Feature Matrix |
| 3 | 1.2 | Mediatheken explorieren |  | 2d | 2014-06-05 A | 2014-06-12 | 2 | 25% | 1.5d | 0.23d | 0.12d |  | Tobias [50%] | 8h | 2h | Wettbewerbsanalyse: Feature Matrix |
| 4 | 1.3 | Einschätzung der Mediatheken |  | 1d | 2014-06-02 | 2014-06-03 |  |  |  | 2.5d |  |  | David [50%] | 4h |  | Feature Matrix Mediatheken |
| 5 | 1.4 | Featurematrix erstellen |  | 0.2d | 2014-06-12 A | 2014-06-12 | 3, 4 | 50% | 0.1d | 0d |  |  | Tobias [50%] | 0.8h | 0.4h |  |
| 6 | 1.5 | Featurematrix abgeschlossen | milestone | 0d | 2014-06-12 | 2014-06-12 | 5 |  |  | 0d |  |  | Tobias |  |  |  |
| 7 | 2 | **Mediatheken einbinden** |  | 20.18d | 2014-06-12 A | 2014-08-25 | 1 | 1% | 19.96d | 0.25d |  |  |  | 296h | 4h |  |
| 8 | 2.1 | API's recherchieren |  | 2d | 2014-06-12 A | 2014-06-19 |  | 25% | 1.5d | 2.5d | 0d |  | David [50%]; Lukas [50%] | 16h | 4h | How-To Mediatheken-Einbinden |
| 9 | 2.2 | **"ZDF" Mediathek** |  | 18.5d | 2014-06-19 | 2014-08-25 | 8 |  |  | 0.25d |  |  |  | 136h |  |  |
| 10 | 2.2.1 | **Suchen in "ZDF"** |  | 6.95d | 2014-06-19 | 2014-07-15 |  |  |  | 4.5d |  |  |  | 40h |  |  |
| 11 | 2.2.1.1 | Exploration der Suchfunktionen von "ZDF" |  | 1d | 2014-06-19 | 2014-06-23 |  |  |  | 4.5d | 0d |  | David [50%] | 4h |  |  |
| 12 | 2.2.1.2 | Entwicklung Queries |  | 3d | 2014-06-23 | 2014-07-01 | 11 |  |  | 4.92d | 0d |  | David [50%] | 12h |  |  |
| 13 | 2.2.1.3 | Parsen der Ergebnisse |  | 2d | 2014-07-01 | 2014-07-08 | 12 |  |  | 4.8d | 0d |  | David [50%] | 8h |  |  |
| 14 | 2.2.1.4 | Darstellung der Ergebnisse |  | 2d | 2014-07-08 | 2014-07-15 | 13 |  |  | 4.92d | 0d |  | David [50%]; Lukas [50%] | 16h |  |  |
| 15 | 2.2.1.5 | Suchen in Mediatheken abgeschlossen | milestone | 0d | 2014-07-15 | 2014-07-15 | 14 |  |  | 4.92d | 0d |  | David |  |  |  |
| 16 | 2.2.2 | **Browsing in "ZDF"** |  | 18.5d | 2014-06-19 | 2014-08-25 | 8 |  |  | 0.25d |  |  |  | 36h |  |  |
| 17 | 2.2.2.1 | Exploration der IA der Mediathek |  | 2d | 2014-06-19 | 2014-06-26 |  |  |  | 14.5d |  |  | Tobias [75%] | 12h |  |  |
| 18 | 2.2.2.2 | Entwicklung Queries |  | 3d | 2014-08-14 | 2014-08-25 | 17 |  |  | 0d |  | as late as possible | Lukas | 24h |  |  |
| 19 | 2.2.2.3 | Browsing in Mediatheken abgeschlossen | milestone | 0d | 2014-08-25 | 2014-08-25 | 18 |  |  | 0.25d |  |  | Tobias |  |  |  |
| 20 | 2.2.3 | **Streamen von "ZDF"** |  | 6.25d | 2014-07-15 | 2014-08-05 | 15 |  |  | 4.8d | 0d |  |  | 56h |  |  |
| 21 | 2.2.3.1 | Streaming |  | 6d | 2014-07-15 | 2014-07-31 |  |  |  | 4.5d | 0d |  | Lukas [50%]; David [50%] | 48h |  |  |
| 22 | 2.2.3.2 | Dateitypen / Player & Grundlagen |  | 1d | 2014-07-31 | 2014-08-05 | 21 |  |  | 4.5d |  |  | Lukas [50%]; David [50%] | 8h |  |  |
| 23 | 2.2.4 | Streaming in Seite einbinden |  | 1d | 2014-08-05 | 2014-08-07 | 20 |  |  | 4.17d | 0d |  | Lukas [50%] | 4h |  |  |
| 24 | 2.2.5 | "ZDF" Mediathek eingebunden | milestone | 0d | 2014-08-07 | 2014-08-07 | 23 |  |  | 4.42d |  |  |  |  |  |  |

| ID | WBS | Task | Type | Duration | Start | Finish | Predecessors | Complete | Remaining | Total slack | Free slack | Constraint | Resources | Work | Actual work |
| --- | --- | --- | --- | --- | --- | --- | --- | --- | --- | --- | --- | --- | --- | --- | --- |
| 25 | 2.3 | **"Das Erste" Mediathek** |  | 17d | 2014-06-19 | 2014-08-19 | 8 |  |  | 0d |  |  |  | 136h |  |
| 26 | 2.3.1 | **Suchen in "Das Erste"** |  | 6.95d | 2014-06-19 | 2014-07-15 |  |  |  | 2.75d |  |  |  | 40h |  |
| 27 | 2.3.1.1 | Exploration der Suchfunktionen von "Das Erste" |  | 1d | 2014-06-19 | 2014-06-23 |  |  |  | 2.75d | 0d |  | David [50%] | 4h |  |
| 28 | 2.3.1.2 | Entwicklung Queries |  | 3d | 2014-06-23 | 2014-07-01 | 27 |  |  | 3.05d | 0d |  | David [50%] | 12h |  |
| 29 | 2.3.1.3 | Parsen der Ergebnisse |  | 2d | 2014-07-01 | 2014-07-08 | 28 |  |  | 3.05d | 0d |  | David [50%] | 8h |  |
| 30 | 2.3.1.4 | Darstellung der Ergebnisse |  | 2d | 2014-07-08 | 2014-07-15 | 29 |  |  | 3.05d | 0d |  | David [50%]; Lukas [50%] | 16h |  |
| 31 | 2.3.1.5 | Suchen in Mediatheken abgeschlossen | milestone | 0d | 2014-07-15 | 2014-07-15 | 30 |  |  | 3.17d | 0d |  | David |  |  |
| 32 | 2.3.2 | **Browsing in "Das Erste"** |  | 17d | 2014-06-19 | 2014-08-19 |  |  |  | 0d |  |  |  | 36h |  |
| 33 | 2.3.2.1 | Exploration der IA's der Mediatheken |  | 2d | 2014-06-19 | 2014-06-26 |  |  |  | 12.5d |  |  | Tobias [75%] | 12h |  |
| 34 | 2.3.2.2 | Entwicklung Queries |  | 3d | 2014-08-11 | 2014-08-19 | 33 |  |  | 0d |  | as late as possible | Lukas | 24h |  |
| 35 | 2.3.2.3 | Browsing in Mediatheken abgeschlossen | milestone | 0d | 2014-08-19 | 2014-08-19 | 34 |  |  | 0d |  |  | Tobias |  |  |
| 36 | 2.3.3 | **Streamen von "Das Erste"** |  | 6.25d | 2014-07-15 | 2014-08-05 | 31 |  |  | 3.17d | 0d |  |  | 56h |  |
| 37 | 2.3.3.1 | Streaming |  | 6d | 2014-07-15 | 2014-07-31 |  |  |  | 2.75d | 0d |  | Lukas [50%]; David [50%] | 48h |  |
| 38 | 2.3.3.2 | Dateitypen / Player & Grundlagen |  | 1d | 2014-07-31 | 2014-08-05 | 37 |  |  | 2.75d |  |  | Lukas [50%]; David [50%] | 8h |  |
| 39 | 2.3.4 | Streaming in Seite einbinden |  | 1d | 2014-08-05 | 2014-08-07 | 36 |  |  | 2.67d | 0d |  | Lukas [50%] | 4h |  |
| 40 | 2.3.5 | "Das Erste" Mediathek eingebunden | milestone | 0d | 2014-08-07 | 2014-08-07 | 39 |  |  | 2.67d |  |  |  |  |  |
| 41 | 2.4 | Kombination Suchalgorithmen |  | 2d | 2014-08-19 | 2014-08-25 | 25 |  |  | 0d |  |  | David [50%] | 8h |  |
| 42 | 3 | **Grundgerüst der Seite** |  | 3.5d | 2014-06-02 A | 2014-06-12 |  | 44% | 1.97d | 23.62d |  |  |  | 16h | 7h |
| 43 | 3.1 | Datenbankschema |  | 0.5d | 2014-06-02 A | 2014-06-02 |  | 25% | 0.38d | 0.75d | 0.25d |  | Lukas [50%] | 2h | 0.5h |
| 44 | 3.2 | PHP Framework |  | 2d | 2014-06-03 A | 2014-06-09 | 43 | 25% | 1.5d | 1d | 0d |  | Lukas [50%] | 8h | 2h |
| 45 | 3.3 | User Login |  | 1.5d | 2014-06-09 A | 2014-06-12 | 44 | 75% | 0.38d | 23.62d |  |  | Lukas [50%] | 6h | 4.5h |
| 46 | 4 | **Interface** |  | 24.25d? | 2014-06-02 A | 2014-08-26 |  | 5% | 22.99d? | 0d |  |  |  | 260h | 32h |
| 47 | 4.1 | Sketching |  | 2d | 2014-06-02 A | 2014-06-05 A |  | 100% |  |  |  |  | David [50%]; Felix [50%]; Lukas [50%]; Tobias [50%] | 32h | 32h |
| 48 | 4.2 | UI Entwürfe abgschlossen | milestone | 0d | 2014-06-05 A | 2014-06-05 A | 47 | 100% |  |  |  |  | Tobias |  |  |

| ID | WBS | Task | Type | Duration | Start | Finish | Predecessors | Total slack | Free slack | Constraint | Resources | Work | Deliverables |
| --- | --- | --- | --- | --- | --- | --- | --- | --- | --- | --- | --- | --- | --- |
| 49 | 4.3 | **Prototyping** |  | 2.12d | 2014-06-05 | 2014-06-16 | 48 | 0d |  |  |  | 40h |  |
| 50 | 4.3.1 | Axure Prototype erstellen |  | 2d | 2014-06-05 | 2014-06-12 |  | 0d |  |  | David [50%]; Felix [50%]; Lukas [50%]; Tobias [50%] | 32h |  |
| 51 | 4.3.2 | Prototype testen |  | 1d | 2014-06-12 | 2014-06-16 | 50 | 0d |  |  | Felix [50%]; Tobias [50%] | 8h |  |
| 52 | 4.4 | **Screendesign** |  | 5.62d | 2014-06-17 | 2014-07-03 | 49 | 0d |  |  |  | 48h |  |
| 53 | 4.4.1 | Screendesign Startseite |  | 2d | 2014-06-17 | 2014-06-23 |  | 0d |  |  | Felix | 16h |  |
| 54 | 4.4.2 | Screendesign Persönlicher Bereich |  | 2d | 2014-06-23 | 2014-06-26 | 53 | 0d |  |  | Felix | 16h |  |
| 55 | 4.4.3 | Screendesign Sendungsbereich |  | 2d | 2014-06-30 | 2014-07-03 | 54 | 0d |  |  | Felix | 16h |  |
| 56 | 4.4.4 | Screendesign abgeschlossen | milestone | 0d | 2014-07-03 | 2014-07-03 | 55 | 0d |  |  | Felix |  |  |
| 57 | 4.5 | **Technische Umsetzung** |  | 14.38d? | 2014-07-03 | 2014-08-26 | 56, 44 | 0d |  |  |  | 76h | HTML Grundgerüst |
| 58 | 4.5.1 | **Startseite** |  | 6.88d | 2014-07-03 | 2014-07-29 |  | 0d |  |  |  | 48h |  |
| 59 | 4.5.1.1 | Beliebte Sendungen |  | 2d | 2014-07-03 | 2014-07-10 |  | 0d |  |  | Felix [50%]; Tobias [25%] | 12h |  |
| 60 | 4.5.1.2 | Neue Sendungen |  | 2d | 2014-07-10 | 2014-07-17 | 59 | 0d |  |  | Felix [50%]; Tobias [25%] | 12h |  |
| 61 | 4.5.1.3 | Kategorisierung |  | 2d | 2014-07-17 | 2014-07-22 | 60 | 0d |  |  | Felix [50%]; Tobias [25%] | 12h |  |
| 62 | 4.5.1.4 | Filterung |  | 2d | 2014-07-22 | 2014-07-29 | 61 | 0d |  |  | Felix [50%]; Tobias [25%] | 12h |  |
| 63 | 4.5.1.5 | Grundgerüst der Startseite abgeschlossen | milestone | 0d | 2014-07-29 | 2014-07-29 | 62 | 0d |  | as late as possible | Felix |  |  |
| 64 | 4.5.2 | Suche |  | 2d | 2014-07-03 | 2014-07-10 |  | 12.38d |  |  |  |  |  |
| 65 | 4.5.3 | Sendung-Detailsseite |  | 2d | 2014-07-03 | 2014-07-10 |  | 12.38d |  |  |  |  |  |
| 66 | 4.5.4 | **Persönlicher Bereich** |  | 14.38d? | 2014-07-03 | 2014-08-26 |  | 0d |  |  |  | 28h |  |
| 67 | 4.5.4.1 | Dashboard (Übersicht) |  | 1d? | 2014-07-03 | 2014-07-08 |  | 8.12d | 0d |  |  |  |  |
| 68 | 4.5.4.2 | Reminder & Abos |  | 2d | 2014-07-08 | 2014-07-15 | 67 | 8.12d | 0.12d |  | Felix [50%] | 8h |  |
| 69 | 4.5.4.3 | Playlisten |  | 2d | 2014-07-15 | 2014-07-22 | 68 | 8.12d | 0d |  | Felix [50%] | 8h |  |
| 70 | 4.5.4.4 | Merkliste |  | 2d | 2014-07-22 | 2014-07-28 | 69 | 8d |  |  | Felix [50%]; Tobias [25%] | 12h |  |
| 71 | 4.5.4.5 | Grundgerüst des persönlichen Bereichs abgeschlossen | milestone | 0d | 2014-08-26 | 2014-08-26 | 70 | 0d |  | as late as possible | Felix |  |  |
| 72 | 4.6 | **Design-Umsetzung** |  | 5.75d | 2014-07-29 | 2014-08-19 |  | 0d |  |  |  | 48h | CSS |
| 73 | 4.6.1 | Umsetzung Startseite |  | 2.5d | 2014-07-29 | 2014-08-05 | 63 | 0d |  |  | Felix [50%]; Tobias [50%] | 20h |  |
| 74 | 4.6.2 | Umsetzung Sendung-Detailseite |  | 2d | 2014-08-05 | 2014-08-12 | 73 | 0d |  |  | Felix [50%]; Tobias [25%] | 12h |  |
| 75 | 4.6.3 | Umsetzung Persönlicher Bereich |  | 2d | 2014-08-12 | 2014-08-19 | 74 | 0d |  |  | Felix [50%]; Tobias | 16h |  |
| 76 | 4.7 | Anpassungen (Design) |  | 1d | 2014-08-19 | 2014-08-21 | 75 | 0d |  |  | Tobias | 8h |  |
| 77 | 4.8 | Browserspezifische Anpassungen |  | 1d | 2014-08-21 | 2014-08-25 | 76 | 0d |  |  | Tobias | 8h |  |
| 78 | 4.9 | Interface abgeschlossen | milestone | 0d | 2014-08-26 | 2014-08-26 | 77 | 0d |  | as late as possible | Tobias |  |  |

| ID | WBS | Task | Duration | Start | Finish | Predecessors | Total slack | Resources | Work |
| --- | --- | --- | --- | --- | --- | --- | --- | --- | --- |
| 79 | 5 | **Testing** | 2.88d | 2014-08-26 | 2014-09-02 | 7, 46 | 0d |  | 89h |
| 80 | 5.1 | Softwaretests | 2d | 2014-08-26 | 2014-09-01 |  | 0d | David; Felix; Lukas; Tobias | 62h |
| 81 | 5.2 | Usability-Test | 0.88d | 2014-09-01 | 2014-09-02 | 80 | 0d | David; Felix; Lukas; Tobias | 27h |
